# gantt_hipocrates

Schedule from MS Project, 2016-10-03 to 2016-10-03.

## Calendars

- Estándar: Mon-Fri 09:00-13:00, 15:00-19:00; Sat-Sun off.

## Schedule

| ID | WBS | Task | Type | Duration | Start | Finish | Total slack |
| --- | --- | --- | --- | --- | --- | --- | --- |
| 1 | 1 | **Iteración 1: Planificación del proyecto** |  | 1d? | 2016-10-03 | 2016-10-03 | 0d |
| 2 | 1.1 | **Análisis y planificación del proyecto** |  | 1d? | 2016-10-03 | 2016-10-03 | 0d |
| 3 | 1.1.1 | **Definición del proyecto** |  | 1d? | 2016-10-03 | 2016-10-03 | 0d |
| 4 | 1.1.1.1 | Elaborar alcance | manual | 1d? | 2016-10-03 | 2016-10-03 |  |
| 5 | 1.1.1.2 | Elaborar ERS | manual | 1d? | 2016-10-03 | 2016-10-03 |  |
| 6 | 1.1.1.3 | Elaborar modelos de proceso | manual | 1d? | 2016-10-03 | 2016-10-03 |  |
| 7 | 1.1.1.4 | Entrega ERS | milestone, manual | 0d | 2016-10-03 | 2016-10-03 |  |
| 8 | 1.1.1.5 | Entrega documento Alcance | milestone, manual | 0d | 2016-10-03 | 2016-10-03 |  |
| 9 | 1.1.1.6 | Entregar modelos de proceso | manual | 1d? | 2016-10-03 | 2016-10-03 |  |
| 10 | 1.1.1.7 | Entrega Matriz de objetivos | milestone, manual | 0d | 2016-10-03 | 2016-10-03 |  |
| 11 | 1.1.2 | **Organización del proyecto** |  | 1d? | 2016-10-03 | 2016-10-03 | 0d |
| 12 | 1.1.2.1 | Elaborar estructura organizacional | manual | 1d? | 2016-10-03 | 2016-10-03 |  |
| 13 | 1.1.2.2 | Establecer responsables | manual | 1d? | 2016-10-03 | 2016-10-03 |  |
| 14 | 1.1.2.3 | Establecer interfaces e interacciones | manual | 1d? | 2016-10-03 | 2016-10-03 |  |
| 15 | 1.1.2.4 | Entregar documento organizacional | manual | 1d? | 2016-10-03 | 2016-10-03 |  |
| 16 | 1.2 | **Planificación de gestión** |  | 1d? | 2016-10-03 | 2016-10-03 | 0d |
| 17 | 1.2.1 | Definir restricciones | manual | 1d? | 2016-10-03 | 2016-10-03 |  |
| 18 | 1.2.2 | Elaborar plan de gestión de riesgos | manual | 1d? | 2016-10-03 | 2016-10-03 |  |
| 19 | 1.2.3 | Definir condiciones asumidas | manual | 1d? | 2016-10-03 | 2016-10-03 |  |
| 20 | 1.2.4 | Elaborar mecanismos de control y ajuste | manual | 1d? | 2016-10-03 | 2016-10-03 |  |
| 21 | 1.2.5 | Entregar plan de gestión | milestone, manual | 0d | 2016-10-03 | 2016-10-03 |  |
| 22 | 1.3 | **Recursos humanos** |  | 1d? | 2016-10-03 | 2016-10-03 | 0d |
| 23 | 1.3.1 | Planificar distribución de recursos humanos | manual | 1d? | 2016-10-03 | 2016-10-03 |  |
| 24 | 1.3.2 | Establecer dependencias | manual | 1d? | 2016-10-03 | 2016-10-03 |  |
| 25 | 1.3.3 | Elaborar cronograma | manual | 1d? | 2016-10-03 | 2016-10-03 |  |
| 26 | 1.3.4 | Entregar plan de recursos humanos | milestone, manual | 0d | 2016-10-03 | 2016-10-03 |  |
| 27 | 1.4 | Entregar plan de proyecto | milestone, manual | 0d | 2016-10-03 | 2016-10-03 |  |

| ID | WBS | Task | Type | Duration | Start | Finish | Total slack |
| --- | --- | --- | --- | --- | --- | --- | --- |
| 28 | 2 | **Iteración 2: Diseño del sistema** |  | 1d? | 2016-10-03 | 2016-10-03 | 0d |
| 29 | 2.1 | **Arquitectura** |  | 1d? | 2016-10-03 | 2016-10-03 | 0d |
| 30 | 2.1.1 | Elaborar casos de uso | manual | 1d? | 2016-10-03 | 2016-10-03 |  |
| 31 | 2.1.2 | Elaborar especificación de casos de uso | manual | 1d? | 2016-10-03 | 2016-10-03 |  |
| 32 | 2.1.3 | Elaborar diagrama de despliegue | manual | 1d? | 2016-10-03 | 2016-10-03 |  |
| 33 | 2.1.4 | Entrega documento arquitectura | manual | 1d? | 2016-10-03 | 2016-10-03 |  |
| 34 | 2.2 | **Modelo de datos CMH** |  | 1d? | 2016-10-03 | 2016-10-03 | 0d |
| 35 | 2.2.1 | Elaborar modelo de datos | manual | 1d? | 2016-10-03 | 2016-10-03 |  |
| 36 | 2.2.2 | Elaborar especificación procedimiento almacenado | manual | 1d? | 2016-10-03 | 2016-10-03 |  |
| 37 | 2.2.3 | Entregar especificación de procedimiento almacenado | manual | 1d? | 2016-10-03 | 2016-10-03 |  |
| 38 | 2.2.4 | Entregar modelo de datos | manual | 1d? | 2016-10-03 | 2016-10-03 |  |
| 39 | 2.3 | **Módulo WS** |  | 1d? | 2016-10-03 | 2016-10-03 | 0d |
| 40 | 2.3.1 | Diagramar clases | manual | 1d? | 2016-10-03 | 2016-10-03 |  |
| 41 | 2.3.2 | Diagramar secuencias | manual | 1d? | 2016-10-03 | 2016-10-03 |  |
| 42 | 2.3.3 | Elaborar casos prueba | manual | 1d? | 2016-10-03 | 2016-10-03 |  |
| 43 | 2.3.4 | Entregar documentación WS | manual | 1d? | 2016-10-03 | 2016-10-03 |  |
| 44 | 2.4 | **Aplicación Web** |  | 1d? | 2016-10-03 | 2016-10-03 | 0d |
| 45 | 2.4.1 | Diagramar clases | manual | 1d? | 2016-10-03 | 2016-10-03 |  |
| 46 | 2.4.2 | Diagramar secuencias | manual | 1d? | 2016-10-03 | 2016-10-03 |  |
| 47 | 2.4.3 | Elaborar casos prueba | manual | 1d? | 2016-10-03 | 2016-10-03 |  |
| 48 | 2.4.4 | Entregar documentación aplicación web | manual | 1d? | 2016-10-03 | 2016-10-03 |  |
| 49 | 2.5 | **Website** |  | 1d? | 2016-10-03 | 2016-10-03 | 0d |
| 50 | 2.5.1 | Diagramar clases | manual | 1d? | 2016-10-03 | 2016-10-03 |  |
| 51 | 2.5.2 | Diagramar secuencias | manual | 1d? | 2016-10-03 | 2016-10-03 |  |
| 52 | 2.5.3 | Elaborar casos prueba | manual | 1d? | 2016-10-03 | 2016-10-03 |  |
| 53 | 2.5.4 | Elaborar bocetos Website | manual | 1d? | 2016-10-03 | 2016-10-03 |  |
| 54 | 2.5.5 | Entregar documentación Website | manual | 1d? | 2016-10-03 | 2016-10-03 |  |

| ID | WBS | Task | Type | Duration | Start | Finish | Total slack |
| --- | --- | --- | --- | --- | --- | --- | --- |
| 55 | 2.6 | **Terminal** |  | 1d | 2016-10-03 | 2016-10-03 | 0d |
| 56 | 2.6.1 | Diagramar clases | manual | 1d | 2016-10-03 | 2016-10-03 |  |
| 57 | 2.6.2 | Diagramar secuencias | manual | 1d | 2016-10-03 | 2016-10-03 |  |
| 58 | 2.6.3 | Elaborar casos prueba | manual | 1d | 2016-10-03 | 2016-10-03 |  |
| 59 | 2.6.4 | Elaborar bocetos Website | manual | 1d | 2016-10-03 | 2016-10-03 |  |
| 60 | 2.6.5 | Entregar documentación Website | manual | 1d | 2016-10-03 | 2016-10-03 |  |
| 61 | 2.7 | **WS Aseguradora** |  | 1d? | 2016-10-03 | 2016-10-03 | 0d |
| 62 | 2.7.1 | Diagramar clases | manual | 1d? | 2016-10-03 | 2016-10-03 |  |
| 63 | 2.7.2 | Diagramar secuencias | manual | 1d? | 2016-10-03 | 2016-10-03 |  |
| 64 | 2.7.3 | Elaborar casos de prueba | manual | 1d? | 2016-10-03 | 2016-10-03 |  |
| 65 | 2.7.4 | Elaborar modelo de datos | manual | 1d? | 2016-10-03 | 2016-10-03 |  |
| 66 | 2.7.5 | Entregar documentación WS Aseguradora | manual | 1d? | 2016-10-03 | 2016-10-03 |  |
| 67 | 2.8 | Entregar diseño del sistema |  | 1d? | 2016-10-03 | 2016-10-03 | 0d |
| 68 | 3 | **Iteración 3: Construcción del sistema** |  | 1d? | 2016-10-03 | 2016-10-03 | 0d |
| 69 | 3.1 | **Script BD CMH** |  | 1d? | 2016-10-03 | 2016-10-03 | 0d |
| 70 | 3.1.1 | Construcción script BD CMH | manual | 1d? | 2016-10-03 | 2016-10-03 |  |
| 71 | 3.1.2 | Entrega script BD CMH | manual | 1d? | 2016-10-03 | 2016-10-03 |  |
| 72 | 3.2 | **Módulo WS** |  | 1d? | 2016-10-03 | 2016-10-03 | 0d |
| 73 | 3.2.1 | Construcción WS | manual | 1d? | 2016-10-03 | 2016-10-03 |  |
| 74 | 3.2.2 | Entrega WS | manual | 1d? | 2016-10-03 | 2016-10-03 |  |
| 75 | 3.3 | **Aplicación Web** |  | 1d? | 2016-10-03 | 2016-10-03 | 0d |
| 76 | 3.3.1 | Construcción web | manual | 1d? | 2016-10-03 | 2016-10-03 |  |
| 77 | 3.3.2 | Entrega módulo web | manual | 1d? | 2016-10-03 | 2016-10-03 |  |
| 78 | 3.4 | **Website** |  | 1d? | 2016-10-03 | 2016-10-03 | 0d |
| 79 | 3.4.1 | Construcción módulo Website | manual | 1d? | 2016-10-03 | 2016-10-03 |  |
| 80 | 3.4.2 | Entrega módulo Website | manual | 1d? | 2016-10-03 | 2016-10-03 |  |

| ID | WBS | Task | Type | Duration | Start | Finish | Total slack |
| --- | --- | --- | --- | --- | --- | --- | --- |
| 81 | 3.5 | **Terminal** |  | 1d? | 2016-10-03 | 2016-10-03 | 0d |
| 82 | 3.5.1 | Construcción módulo terminal | manual | 1d? | 2016-10-03 | 2016-10-03 |  |
| 83 | 3.5.2 | Entrega módulo terminal | manual | 1d? | 2016-10-03 | 2016-10-03 |  |
| 84 | 3.6 | **WS Aseguradora** |  | 1d? | 2016-10-03 | 2016-10-03 | 0d |
| 85 | 3.6.1 | Construcción script BD CMH | manual | 1d? | 2016-10-03 | 2016-10-03 |  |
| 86 | 3.6.2 | Construcción módulo aseguradora | manual | 1d? | 2016-10-03 | 2016-10-03 |  |
| 87 | 3.6.3 | Entrega script BD WS Aseguradora | manual | 1d? | 2016-10-03 | 2016-10-03 |  |
| 88 | 3.6.4 | Entrega módulo WS Aseguradora | manual | 1d? | 2016-10-03 | 2016-10-03 |  |
| 89 | 3.7 | Entrega del sistema | manual | 1d? | 2016-10-03 | 2016-10-03 |  |
